# Power BI

Schedule from Primavera P6, 2023-07-18 to 2024-07-16, data date 2023-07-18, costs in SAR.

## Calendars

- 8x10: Mon-Thu 08:00-16:00; Fri off; Sat-Sun 08:00-16:00.
- BEPPWO-5: Mon-Thu 08:00-12:00, 13:00-17:00; Fri off; Sat 08:00-16:00; Sun 08:00-12:00, 13:00-17:00. Exceptions (off unless hours are given): 2023-09-24, 2024-02-22, 2024-04-10 to 2024-04-11, 2024-04-13, 2024-06-15 to 2024-06-18.
- Corporate - Standard Full Time: Mon-Thu 08:00-16:00; Fri off; Sat-Sun 08:00-16:00.

## Resources

| Resource | Group | Notes |
| --- | --- | --- |
| CABINET.TECH | labor | ?? |
| HELPER | labor | ï»¿ |
| Curbstone builder | labor |  |
| Mech Tech | labor |  |
| WATER PROOFING TECHNICIAN | labor | ï»¿ |
| ELECTRICIAN | labor | ï»¿ |
| OPERATOR | labor | ï»¿ |
| WELDER | labor | ?? |
| WELDER.HELPER | labor | ?? |
| Crane | equipment |  |
| ELECTRICAL.HELPER | labor | ?? |
| CARPENTER | labor | ï»¿ |
| Concrete Foundation Subcontractor | labor |  |
| STEEL FIXER | labor | ?? |
| Paving & Roadways Subcontractor | labor |  |
| GRADER | equipment |  |
| BOBCAT | equipment | ï»¿ |
| PLUMBER | labor | ?? |
| PLUMBER. HELPER | labor | ?? |
| HVAC.TECH | labor | ??? |
| Fire Suppression Subcontractor | labor |  |
| FIRE FIGHTING.TECH.HELPER | labor | ?? |
| FIREFIGHTING.TECH | labor | ??? |
| HVAC.TECH.HELPER | labor | ?? |
| CABINET.HELPER | labor | ?? |
| ASPHALT PAVER | equipment | ï»¿ |
| Specialty Metal Fabricator Subcontractor | labor |  |
| PAINTER | labor | ï»¿ |
| CABINET.HELPER | labor | ??? |
| METAL WORKS | material |  |
| PAVING WORKS | material | ï»¿ |
| CONCRETE SUP WORKS | material |  |
| ELECTRICAL WORKS | material |  |
| ASPHALT PAVER | equipment |  |
| METAL WORKS | material |  |
| POCKLAIN | equipment | ï»¿ |
| DUMP TRUCK | equipment | ï»¿ |
| PLUMBING WORKS | material |  |
| PLASTER.HELPER | labor | ??? |
| LOADER | equipment | ?? |
| Agricultural tec | labor |  |
| Agricultural Helper | labor |  |
| SOIL TERMITE WORKS | material | ï»¿ |
| SOIL REPLACEMENT WORKS | material |  |
| CONCRETE SST WORKS | material |  |
| Design Engineer | labor |  |
| PLASTER | labor | ?? |

## Schedule

| ID | WBS | Activity | Type | Duration | Start | Finish | Predecessors | Total float | Free float | Calendar | Resources | Cost |
| --- | --- | --- | --- | --- | --- | --- | --- | --- | --- | --- | --- | --- |
|  | 1 | **Milestones** |  |  | 2023-07-18 | 2024-07-16 |  |  |  |  |  |  |
| A3590 |  | Project Start Date |  | 1d | 2023-07-18 | 2023-07-19 |  | 0d |  |  |  |  |
| A3600-20 |  | Schematic Design Start Date | milestone | 0d | 2023-07-19 | 2023-07-19 | A3590 | 170.31d | 25d | BEPPWO-5 |  |  |
| A3600-30 |  | Schematic Design Finish Date | milestone | 0d | 2023-08-17 | 2023-08-17 | A3760 FF, A3600-20 SF | 145.31d | 0d | BEPPWO-5 |  |  |
| A3600-40 |  | Final Design Start Date | milestone | 0d | 2023-08-17 | 2023-08-17 | A3600-30 | 145.31d | 0d | BEPPWO-5 |  |  |
| A3600-60 |  | Procurment Start Date | milestone | 0d | 2023-08-17 | 2023-08-17 | A3600-40 SS | 145.31d | 0d | BEPPWO-5 |  |  |
| A3600-80 |  | Procurment FINISH Date | milestone | 0d | 2023-08-17 | 2023-08-17 | A3600-60 SS | 145.31d | 13.75d | BEPPWO-5 |  |  |
| A3600-50 |  | Final Design Finish Date | milestone | 0d | 2023-09-02 | 2023-09-02 | A3900 FF | 131.56d | 0d | BEPPWO-5 |  |  |
| A3600-70 |  | Construction Start Date | milestone | 0d | 2023-09-03 | 2023-09-03 | A3600-50, A3600-80 SS | 131.56d | 2d | BEPPWO-5 |  |  |
| A3600-10 |  | Construction Finish Date | milestone | 0d | 2024-07-04 | 2024-07-04 | A3400 FF, A3600-60 SF | 0d |  | BEPPWO-5 |  |  |
| A3600 |  | PROJECT FINISH Date |  | 0d | 2024-07-16 | 2024-07-16 | A3670 | 0d |  |  |  |  |
|  | 2 | **Mobilization** |  |  | 2023-07-18 | 2023-08-01 |  |  |  |  |  |  |
| A3650 |  | Set Offices |  | 5d | 2023-07-18 | 2023-07-25 | A3590 SS | 128.15d | 0d |  |  |  |
| A3640 |  | Site Cleaning |  | 5d | 2023-07-25 | 2023-08-01 | A3650 | 128.15d | 23.6d |  |  |  |
|  | 3 | **Engineering** |  |  | 2023-07-18 | 2023-09-02 |  |  |  |  |  |  |
|  | 1 | **Design Package** |  |  | 2023-07-18 | 2023-09-02 |  |  |  |  |  |  |
|  | 2 | **Schematic Design Package** |  |  | 2023-07-18 | 2023-08-17 |  |  |  |  |  |  |
|  | 1 | **Schematic Design activity** |  |  | 2023-07-18 | 2023-08-17 |  |  |  |  |  |  |
|  | 1 | **Submit for approval Schematic Designs** |  |  | 2023-07-18 | 2023-08-09 |  |  |  |  |  |  |
| A3610 |  | Prepare and Submitt Cabins Design {Schematic Design} |  | 5d | 2023-07-18 | 2023-07-25 | A3590 SS | 60.32d | 0d |  | Design Engineer | 3,857 |
| A3560 |  | Prepare and Submitt Master plan {Schematic Design} |  | 15d | 2023-07-19 | 2023-08-09 | A3590 | 93.1d | 0d |  | Design Engineer | 3,857 |
| A3620 |  | Prepare and Submitt Land scape Design {Schematic Design} |  | 5d | 2023-07-19 | 2023-07-26 | A3590 | 115.55d | 0d |  | Design Engineer | 3,857 |
| A3630 |  | Prepare and Submitt Departure Hall Design {Schematic Design} |  | 5d | 2023-07-19 | 2023-07-26 | A3590 | 33.15d | 0d |  | Design Engineer | 3,857 |
| A3730 |  | Prepare and Submitt Electerical Design {Schematic Design} |  | 5d | 2023-07-19 | 2023-07-26 | A3590 | 63.09d | 0d |  | Design Engineer | 3,857 |
| A3740 |  | Prepare and Submitt Mechanical design {Schematic Design} |  | 5d | 2023-07-19 | 2023-07-26 | A3590 | 129.89d | 0d |  | Design Engineer | 3,857 |
| A3750 |  | Prepare and Submitt Metal fence Design {Schematic Design} |  | 5d | 2023-07-19 | 2023-07-26 | A3590 | 129.89d | 0d |  | Design Engineer | 3,857 |

Notes:
- A3610: Expenses: (New Expense Item) 3857
- A3560: Expenses: (New Expense Item) 3857
- A3620: Expenses: (New Expense Item) 3857
- A3630: Expenses: (New Expense Item) 3857
- A3730: Expenses: (New Expense Item) 3857
- A3740: Expenses: (New Expense Item) 3857
- A3750: Expenses: (New Expense Item) 3857

| ID | WBS | Activity | Duration | Start | Finish | Predecessors | Total float | Free float | Resources | Cost |
| --- | --- | --- | --- | --- | --- | --- | --- | --- | --- | --- |
|  | 2 | **Approved Schematic Designs** |  | 2023-07-25 | 2023-08-17 |  |  |  |  |  |
| A3770 |  | Approved Cabins Design {Schematic Design} | 5d | 2023-07-25 | 2023-08-01 | A3610 | 60.32d | 0d | Design Engineer | 3,857 |
| A3780 |  | Approved Land scape Design {Schematic Design} | 5d | 2023-07-26 | 2023-08-02 | A3770 SS, A3620 | 115.55d | 0d | Design Engineer | 3,857 |
| A3790 |  | Approved Departure Hall Design {Schematic Design} | 5d | 2023-07-26 | 2023-08-02 | A3630 | 33.15d | 0d | Design Engineer | 3,857 |
| A3800 |  | Approved Electerical Design {Schematic Design} | 5d | 2023-07-26 | 2023-08-02 | A3730 | 63.09d | 0d | Design Engineer | 3,857 |
| A3810 |  | Approved Mechanical design {Schematic Design} | 5d | 2023-07-26 | 2023-08-02 | A3740 | 129.89d | 0d | Design Engineer | 3,857 |
| A3820 |  | Approved Metal fence Design {Schematic Design} | 5d | 2023-07-26 | 2023-08-02 | A3750 | 129.89d | 0d | Design Engineer | 3,857 |
| A3760 |  | Approved Master plan {Schematic Design} | 5d | 2023-08-10 | 2023-08-17 | A3560 | 93.1d | 0d | Design Engineer | 3,857 |
|  | 7 | **Detailed Design Package** |  | 2023-08-01 | 2023-09-02 |  |  |  |  |  |
|  | 1 | **Submit for approval Detailed Design** |  | 2023-08-01 | 2023-08-24 |  |  |  |  |  |
| A3840 |  | Prepare and Submitt Cabins Design {Detailed Design} | 5d | 2023-08-01 | 2023-08-08 | A3770 | 60.32d | 0d | Design Engineer | 3,857 |
| A3850 |  | Prepare and Submitt Land scape Design {Detailed Design} | 5d | 2023-08-02 | 2023-08-09 | A3780 | 115.55d | 0d | Design Engineer | 3,857 |
| A3860 |  | Prepare and Submitt Departure Hall Design {Detailed Design} | 5d | 2023-08-02 | 2023-08-09 | A3790 | 33.15d | 0d | Design Engineer | 3,857 |
| A3870 |  | Prepare and Submitt Electerical Design {Detailed Design} | 5d | 2023-08-02 | 2023-08-09 | A3800 | 63.09d | 0d | Design Engineer | 3,857 |
| A3880 |  | Prepare and Submitt Mechanical design {Detailed Design} | 5d | 2023-08-02 | 2023-08-09 | A3810 | 129.89d | 0d | Design Engineer | 3,857 |
| A3890 |  | Prepare and Submitt Metal fence Design {Detailed Design} | 5d | 2023-08-02 | 2023-08-09 | A3820 | 129.89d | 0d | Design Engineer | 3,857 |
| A3830 |  | Prepare and Submitt Master plan {Detailed Design} | 5d | 2023-08-17 | 2023-08-24 | A3760 | 93.1d | 0d | Design Engineer | 3,857 |
|  | 2 | **Approved Detailed Design** |  | 2023-08-08 | 2023-09-02 |  |  |  |  |  |
| A3910 |  | Approved Cabins Design {Detailed Design} | 5d | 2023-08-08 | 2023-08-15 | A3840 | 60.32d | 0d | Design Engineer | 3,857 |
| A3920 |  | Approved Land scape Design {Detailed Design} | 5d | 2023-08-10 | 2023-08-17 | A3850 | 115.55d | 11d | Design Engineer | 3,857 |
| A3930 |  | Approved Departure Hall Design {Detailed Design} | 5d | 2023-08-10 | 2023-08-17 | A3860 | 33.15d | 0d | Design Engineer | 3,857 |
| A3940 |  | Approved Electerical Design {Detailed Design} | 5d | 2023-08-10 | 2023-08-17 | A3870 | 63.09d | 0d | Design Engineer | 3,857 |
| A3950 |  | Approved Mechanical Design {Detailed Design} | 5d | 2023-08-10 | 2023-08-17 | A3880 | 129.89d | 0d | Design Engineer | 3,857 |
| A3960 |  | Approved Metal fence Design {Detailed Design} | 5d | 2023-08-10 | 2023-08-17 | A3890 | 129.89d | 0d | Design Engineer | 3,861 |
| A3900 |  | Approved Master plan {Detailed Design} | 6d | 2023-08-24 | 2023-09-02 | A3830 | 93.1d | 0d | Design Engineer | 3,857 |

Notes:
- A3770: Expenses: (New Expense Item) 3857
- A3780: Expenses: (New Expense Item) 3857
- A3790: Expenses: (New Expense Item) 3857
- A3800: Expenses: (New Expense Item) 3857
- A3810: Expenses: (New Expense Item) 3857
- A3820: Expenses: (New Expense Item) 3857
- A3760: Expenses: (New Expense Item) 3857
- A3840: Expenses: (New Expense Item) 3857
- A3850: Expenses: (New Expense Item) 3857
- A3860: Expenses: (New Expense Item) 3857
- A3870: Expenses: (New Expense Item) 3857
- A3880: Expenses: (New Expense Item) 3857
- A3890: Expenses: (New Expense Item) 3857
- A3830: Expenses: (New Expense Item) 3857
- A3910: Expenses: (New Expense Item) 3857
- A3920: Expenses: (New Expense Item) 3857
- A3930: Expenses: (New Expense Item) 3857
- A3940: Expenses: (New Expense Item) 3857
- A3950: Expenses: (New Expense Item) 3857
- A3960: Expenses: (New Expense Item) 3861
- A3900: Expenses: (New Expense Item) 3857

| ID | WBS | Activity | Duration | Start | Finish | Predecessors | Total float | Free float | Calendar | Resources | Cost |
| --- | --- | --- | --- | --- | --- | --- | --- | --- | --- | --- | --- |
|  | 6 | **Procurement** |  | 2023-08-16 | 2023-09-09 |  |  |  |  |  |  |
| A3680 |  | Cabins Submittal | 2d | 2023-08-16 | 2023-08-17 | A3910 | 75.4d | 0d | Corporate - Standard Full Time |  |  |
| A3990 |  | Electerical Material Submittal | 1.6d | 2023-08-17 | 2023-08-20 | A3940 | 63.09d | 0d |  |  |  |
| A4020 |  | Metal fence Material Submittal | 1.6d | 2023-08-17 | 2023-08-20 | A3960 | 165.18d | 0d |  |  |  |
| A4050 |  | Mechanical Material Submittal | 1.6d | 2023-08-17 | 2023-08-20 | A3950, A3960 | 129.89d | 0d |  |  |  |
| A4000 |  | Electerical Material Approval | 1.6d | 2023-08-20 | 2023-08-22 | A3990 | 63.09d | 0d |  |  |  |
| A4030 |  | Metal fence Material Approval | 1.6d | 2023-08-20 | 2023-08-22 | A4020 | 165.18d | 0d |  |  |  |
| A4060 |  | Mechanical Material Approval | 1.6d | 2023-08-20 | 2023-08-22 | A4050 | 129.89d | 0d |  |  |  |
| A4010 |  | Electerical Material Po | 1.6d | 2023-08-22 | 2023-08-24 | A4000 | 63.09d | 0d |  |  |  |
| A4040 |  | Metal fence Material Po | 1.6d | 2023-08-22 | 2023-08-24 | A4030 | 165.18d | 132.03d |  |  |  |
| A4070 |  | Mechanical Material Po | 1.6d | 2023-08-22 | 2023-08-24 | A4060 | 129.89d | 0d |  |  |  |
| A3690 |  | Cabins Approval | 2d | 2023-08-24 | 2023-08-26 | A3680 FS+5d | 75.4d | 0d | Corporate - Standard Full Time |  |  |
| A3700 |  | Cabins Po | 1.6d | 2023-08-27 | 2023-08-28 | A3690 | 60.32d | 0d |  |  |  |
| A3710 |  | Sidewalks Material Submittal | 2d | 2023-09-03 | 2023-09-04 | A3700, A3900, A3920 | 130.69d | 0d | Corporate - Standard Full Time |  |  |
| A3970 |  | Sidewalks Material Approval | 1.6d | 2023-09-05 | 2023-09-06 | A3710 | 143.92d | 0d |  |  |  |
| A3980 |  | Sidewalks Material Po | 1.6d | 2023-09-07 | 2023-09-09 | A3970 | 143.92d | 0d |  |  |  |
|  | 4 | **Construction** |  | 2023-07-18 | 2024-07-04 |  |  |  |  |  |  |
|  | 1 | **Side wide works** |  | 2023-09-05 | 2023-10-11 |  |  |  |  |  |  |
|  | 1 | **ELV work side wide** |  | 2023-09-05 | 2023-10-11 |  |  |  |  |  |  |
| A1060 |  | Direct Buried ELV Duct | 17.22d | 2023-09-05 | 2023-09-30 | A3640, A3710, A3600-70 SS | 104.55d | 0d |  |  | 360,000 |
| A1070 |  | Concrete Encased ELV Duct | 8d | 2023-09-30 | 2023-10-11 | A1060 | 104.55d | 0d |  | Mech Tech | 140,000 |
|  | 3 | **Outbound Area Works** |  | 2023-07-19 | 2024-05-25 |  |  |  |  |  |  |
|  | 1 | **Cargo outbound area** |  | 2023-08-24 | 2024-04-02 |  |  |  |  |  |  |
|  | 1 | **Civil works** |  | 2023-08-29 | 2024-02-03 |  |  |  |  |  |  |
| A1020 |  | Provide New Prefabricated Security | 20d | 2023-08-29 | 2023-09-26 | A3700 | 131.92d | 0d |  | CABINET.TECH [130.08 h] | 150,000 |
| A1030 |  | Cabinets/Telecom Rooms | 10.6d | 2023-09-14 | 2023-09-30 | A1070 SF | 104.55d | 0d |  | HELPER [106.02 h] | 30,000 |
| A1050 |  | Supply and install curbs for cabins | 10.19d | 2023-09-27 | 2023-10-11 | A1020, A3980 | 131.92d | 0d |  | Curbstone builder [101.93 h] | 9,600 |
| A1040 |  | Construct New Concrete Islands | 10.25d | 2023-09-30 | 2023-10-15 | A1030 | 104.55d | 0d |  |  | 12,500 |
| A1160 |  | Supply and Install Tire Shredder | 10.4d | 2023-10-11 | 2023-10-26 | A1050 | 131.92d | 0d |  | HELPER [104.02 h] | 20,000 |
| A1150 |  | Construction of Speed Humps | 10.24d | 2023-10-15 | 2023-10-30 | A1040 | 104.55d | 0d |  | OPERATOR [102.4 h] | 12,000 |
| A1130 |  | Supply and Install Traffic Lights | 10.3d | 2023-10-26 | 2023-11-11 | A1160 | 131.92d | 0d |  | ELECTRICIAN [103.02 h] | 15,000 |
| A1120 |  | Execute Cabin Protection Works | 15d | 2023-10-30 | 2023-11-20 | A1150 | 104.55d | 0d |  | WATER PROOFING TECHNICIAN [108.02 h] | 40,000 |
| A1170 |  | Supply and Install Traffic Sign | 10.24d | 2023-11-11 | 2023-11-26 | A1130 | 131.92d | 27.37d |  |  | 12,000 |
| A1140 |  | First and Second Fix for Gate Barriers | 15d | 2023-11-20 | 2023-12-12 | A1120 | 104.55d | 0d |  | ELECTRICIAN [124.07 h] | 120,000 |
| A1190 |  | Overhead Cantilever Traffic Sign | 16d | 2023-12-12 | 2024-01-04 | A1140 | 104.55d | 0d |  | Crane [124.07 h] | 120,000 |
| A1180 |  | Overhead Traffic Sign Gantries | 20d | 2024-01-04 | 2024-02-03 | A1190, A1170 | 104.55d |  |  | WELDER [140.12 h]; WELDER.HELPER [140.12 h] | 200,000 |

Notes:
- A1060: Expenses: (New Expense Item) 360000
- A1070: Expenses: (New Expense Item) 140000
- A1020: Expenses: (New Expense Item) 150000
- A1030: Expenses: (New Expense Item) 30000
- A1050: Expenses: (New Expense Item) 9600
- A1040: Expenses: (New Expense Item) 12500
- A1160: Expenses: (New Expense Item) 20000
- A1150: Expenses: (New Expense Item) 12000
- A1130: Expenses: (New Expense Item) 15000
- A1120: Expenses: (New Expense Item) 40000
- A1170: Expenses: (New Expense Item) 12000
- A1140: Expenses: (New Expense Item) 120000
- A1190: Expenses: (New Expense Item) 120000
- A1180: Expenses: (New Expense Item) 0; (New Expense Item)1 200000

| ID | WBS | Activity | Duration | Start | Finish | Predecessors | Total float | Free float | Resources | Cost |
| --- | --- | --- | --- | --- | --- | --- | --- | --- | --- | --- |
|  | 2 | **Electrical works** |  | 2023-08-24 | 2024-04-02 |  |  |  |  |  |
| A1200 |  | Supply and install of SMDB Pillar | 16d | 2023-08-24 | 2023-09-17 | A4010 | 63.58d | 0d | ELECTRICAL.HELPER [104.02 h] | 20,000 |
| A1210 |  | Supply and install electrical cables | 10.5d | 2023-09-17 | 2023-10-02 | A1200 | 63.58d | 0d | ELECTRICAL.HELPER [105.02 h] | 25,000 |
| A1220 |  | Supply and install electrical cables | 10.36d | 2023-10-02 | 2023-10-17 | A1210 | 63.58d | 0d | ELECTRICAL.HELPER [103.62 h] | 18,000 |
| A1230 |  | Generator Supply and Installation | 11.61d | 2023-10-17 | 2023-11-02 | A1220 | 63.58d | 0d | ELECTRICAL.HELPER [116.05 h] | 80,000 |
| A1240 |  | Supply and install Automatic Transfer Switch | 10.4d | 2023-11-18 | 2023-12-03 | A1230 FS+10d | 63.58d | 0d | ELECTRICAL.HELPER [104.02 h] | 20,000 |
| A1250 |  | Supply and install EDB power supply | 10.3d | 2023-12-03 | 2023-12-18 | A1240 | 63.58d | 0d | ELECTRICAL.HELPER [103.02 h] | 15,000 |
| A1260 |  | electrical Cables from EDB to DB's | 15d | 2023-12-18 | 2024-01-08 | A1250 | 63.58d | 0d | ELECTRICAL.HELPER [140.12 h] | 200,000 |
| A1270 |  | install cables from SMDB to LCP | 11d | 2024-01-08 | 2024-01-24 | A1260 | 63.58d | 0d | ELECTRICAL.HELPER [110.03 h] | 50,000 |
| A1280 |  | Supply and install lighting poles | 11.8d | 2024-01-24 | 2024-02-11 | A1270 | 63.58d | 0d | ELECTRICAL.HELPER [118.05 h] | 90,000 |
| A1290 |  | Lightning Protection and Grounding | 10.5d | 2024-02-11 | 2024-02-26 | A1280 | 63.58d | 0d | ELECTRICAL.HELPER [105.02 h] | 25,000 |
| A1300 |  | install cables from LCP to lighting poles | 20d | 2024-02-26 | 2024-03-26 | A1290 | 63.58d | 0d | ELECTRICAL.HELPER [130.08 h] | 150,000 |
| A1310 |  | Supply and install uninterruptible power supply | 5d | 2024-03-26 | 2024-04-02 | A1300 | 63.58d |  | ELECTRICAL.HELPER [108.02 h] | 40,000 |
|  | 2 | **Passenger outbound area** |  | 2023-08-24 | 2024-04-02 |  |  |  |  |  |
|  | 1 | **Civil works** |  | 2023-08-24 | 2023-12-04 |  |  |  |  |  |
| A1330 |  | Cabinets/Telecom Rooms | 20d | 2023-08-24 | 2023-09-23 | A4070 | 151.06d | 0d | CABINET.TECH [118.05 h]; Crane [118.05 h] | 90,000 |
| A1320 |  | Provide New Prefabricated cabins | 20d | 2023-08-29 | 2023-09-26 | A3700 | 148.06d | 0d | CABINET.TECH [130.08 h]; Crane [130.08 h] | 150,000 |
| A1410 |  | Execute Road Works | 15d | 2023-09-03 | 2023-09-24 | A3900 | 164.86d | 0d | Paving & Roadways Subcontractor [107.22 h]; GRADER [107.22 h]; BOBCAT [107.22 h] | 36,000 |
| A1430 |  | Curb Stone | 20d | 2023-09-10 | 2023-10-08 | A3980 | 155.06d | 0d | Curbstone builder [112.83 h] | 64,000 |
| A1420 |  | Construct Median | 20d | 2023-09-23 | 2023-10-22 | A1330 | 151.06d | 0d | Concrete Foundation Subcontractor [113.53 h] | 67,500 |
| A1380 |  | First and Second Fix Barriers | 20d | 2023-09-24 | 2023-10-23 | A1410 | 164.86d | 13.8d | Concrete Foundation Subcontractor [120.05 h] | 100,000 |
| A1350 |  | Supply and install curbs | 15d | 2023-09-27 | 2023-10-18 | A1320 | 148.06d | 0d | Concrete Foundation Subcontractor [102.4 h]; WELDER [102.4 h]; WELDER.HELPER [102.4 h] | 12,000 |
| A1360 |  | Execute Cabin Protection Works | 20d | 2023-10-09 | 2023-11-06 | A1430 | 155.06d | 4d | Concrete Foundation Subcontractor [108.02 h]; STEEL FIXER [108.02 h] | 40,000 |
| A1400 |  | Supply and Install Tire Shredder | 15d | 2023-10-18 | 2023-11-09 | A1350 | 148.06d | 0d | WELDER [104.02 h]; WELDER.HELPER [104.02 h] | 20,000 |
| A1340 |  | Construct New Concrete Islands | 15d | 2023-10-22 | 2023-11-12 | A1420 | 151.06d | 0d | CARPENTER [101.5 h] | 7,500 |
| A1370 |  | Supply and Install Traffic Lights | 15d | 2023-11-09 | 2023-12-02 | A1400 | 148.06d |  | Concrete Foundation Subcontractor [103.02 h]; Crane [103.02 h] | 15,000 |
| A1390 |  | Construction of Speed Humps | 0d | 2023-11-13 | 2023-11-13 | A1340, A1380 | 151.06d | 0d |  | 12,000 |
| A1440 |  | Execute Road Marking | 15d | 2023-11-13 | 2023-12-04 | A1360, A1390 | 151.06d |  |  | 24,000 |

Notes:
- A1200: Expenses: (New Expense Item) 20000
- A1210: Expenses: (New Expense Item) 25000
- A1220: Expenses: (New Expense Item) 18000
- A1230: Expenses: (New Expense Item) 80000
- A1240: Expenses: (New Expense Item) 20000
- A1250: Expenses: (New Expense Item) 15000
- A1260: Expenses: (New Expense Item) 200000
- A1270: Expenses: (New Expense Item) 50000
- A1280: Expenses: (New Expense Item) 90000
- A1290: Expenses: (New Expense Item) 25000
- A1300: Expenses: (New Expense Item) 150000
- A1310: Expenses: (New Expense Item) 40000
- A1330: Expenses: (New Expense Item) 90000
- A1320: Expenses: (New Expense Item) 150000
- A1410: Expenses: (New Expense Item) 36000
- A1430: Expenses: (New Expense Item) 64000
- A1420: Expenses: (New Expense Item) 67500
- A1380: Expenses: (New Expense Item) 100000
- A1350: Expenses: (New Expense Item) 12000
- A1360: Expenses: (New Expense Item) 40000
- A1400: Expenses: (New Expense Item) 20000
- A1340: Expenses: (New Expense Item) 7500
- A1370: Expenses: (New Expense Item) 15000
- A1390: Expenses: (New Expense Item) 12000
- A1440: Expenses: (New Expense Item) 24000

| ID | WBS | Activity | Duration | Start | Finish | Predecessors | Total float | Free float | Resources | Cost |
| --- | --- | --- | --- | --- | --- | --- | --- | --- | --- | --- |
|  | 2 | **Electrical works** |  | 2023-08-24 | 2024-04-02 |  |  |  |  |  |
| A1480 |  | install cables from MDB to SMDB | 10d | 2023-08-24 | 2023-09-07 | A4010 | 63.54d | 0d | ELECTRICAL.HELPER [100.05 h] | 220 |
| A1500 |  | install Automatic Transfer Switch | 10.4d | 2023-09-18 | 2023-10-03 | A1480 FS+7d | 63.54d | 0d | ELECTRICAL.HELPER [104.02 h] | 20,000 |
| A1530 |  | install cables from LCP to lighting poles | 20d | 2023-10-03 | 2023-11-01 | A1500 | 63.54d | 0d | ELECTRICAL.HELPER [141.92 h] | 209,000 |
| A1520 |  | install cables from MDB to LCP | 11.32d | 2023-11-01 | 2023-11-18 | A1530 | 63.54d | 0d | ELECTRICAL.HELPER [113.23 h] | 66,000 |
| A1540 |  | install cables from SMDB to 9 new cabins | 13.97d | 2023-11-18 | 2023-12-09 | A1520 | 63.54d | 0d | ELECTRICAL.HELPER [139.72 h] | 198,000 |
| A1510 |  | install EDB power supply pillar | 11d | 2023-12-09 | 2023-12-24 | A1540 | 63.54d | 0d | ELECTRICAL.HELPER [103.02 h] | 15,000 |
| A1560 |  | install uninterruptible power supply | 10.8d | 2023-12-24 | 2024-01-09 | A1510 | 63.54d | 0d | ELECTRICAL.HELPER [108.02 h] | 40,000 |
| A1490 |  | Installation of Generator | 11.61d | 2024-01-09 | 2024-01-25 | A1560 | 63.54d | 0d | ELECTRICAL.HELPER [116.05 h] | 80,000 |
| A1550 |  | Lightning Protection and Grounding System | 10.5d | 2024-01-25 | 2024-02-11 | A1490 | 63.54d | 0d | ELECTRICAL.HELPER [105.02 h] | 25,000 |
| A1460 |  | Supply and install of lighting | 10.3d | 2024-02-11 | 2024-02-25 | A1550 | 63.54d | 0d | ELECTRICAL.HELPER [103.02 h] | 15,000 |
| A1450 |  | Supply and install of SMDB | 12d | 2024-02-25 | 2024-03-13 | A1460 | 63.54d | 0d | ELECTRICAL.HELPER [106.02 h] | 30,000 |
| A1470 |  | Supply and install street lighting | 13.61d | 2024-03-13 | 2024-04-02 | A1450 | 63.54d |  | ELECTRICAL.HELPER [136.1 h] | 180,000 |
|  | 3 | **Buss outbound area** |  | 2023-08-17 | 2024-05-25 |  |  |  |  |  |
|  | 1 | **Civil works** |  | 2023-08-17 | 2024-05-25 |  |  |  |  |  |
| A1590 |  | Mosque with Toilets Reinforced Concrete | 20d | 2023-08-17 | 2023-09-16 | A3930 | 33.15d | 0d | Concrete Foundation Subcontractor [184.23 h] | 420,000 |
| A3720 |  | Structural Works Customs and Immigraton | 90d | 2023-08-17 | 2023-12-26 | A3930 | 70.86d | 0d | Concrete Foundation Subcontractor [220.35 h] | 600,000 |
| A1740 |  | Curb Stone | 20d | 2023-09-10 | 2023-10-08 | A3980 | 185.06d | 151.91d |  | 160,000 |
| A1600 |  | Mosque with Toilets | 20d | 2023-09-16 | 2023-10-15 | A1590 | 33.15d | 0d | CARPENTER [220.35 h] | 600,000 |
| A1610 |  | Provide New Prefabricated | 12.41d | 2023-10-15 | 2023-11-01 | A1600 | 33.15d | 0d | CABINET.TECH [124.07 h] | 120,000 |
| A1620 |  | Cabinets/Telecom Rooms | 11d | 2023-11-01 | 2023-11-18 | A1610 | 33.15d | 0d | CABINET.TECH [106.02 h] | 30,000 |
| A1630 |  | Construct New Concrete Islands | 10.15d | 2023-11-18 | 2023-12-03 | A1620 | 33.15d | 0d | Concrete Foundation Subcontractor [101.5 h] | 7,500 |
| A1640 |  | Install curbs for cabins | 10.14d | 2023-12-03 | 2023-12-17 | A1630 | 33.15d | 0d | Curbstone builder [101.45 h] | 7,200 |
| A1650 |  | Execute Cabin Protection Works | 10.64d | 2023-12-17 | 2024-01-02 | A1640 | 33.15d | 0d |  | 32,000 |
| A-11000 |  | Masonry Works | 20d | 2023-12-26 | 2024-01-24 | A1590, A3720 | 70.86d | 0d | PLASTER [280.52 h] | 300,000 |
| A1660 |  | Install Traffic Lights | 10.24d | 2024-01-02 | 2024-01-16 | A1650 | 33.15d | 0d | Crane [102.4 h] | 12,000 |
| A1670 |  | First and Second Fix for Gate | 11.61d | 2024-01-16 | 2024-02-03 | A1660 | 33.15d | 0d | Crane [116.05 h]; Concrete Foundation Subcontractor [116.05 h] | 80,000 |
| A-11010 |  | Finishes | 20d | 2024-01-24 | 2024-02-22 | A-11000 | 70.86d | 0d | PLASTER [280.52 h] | 300,000 |
| A1680 |  | Construction of Speed Humps | 10.24d | 2024-02-03 | 2024-02-18 | A1670 | 33.15d | 0d |  | 12,000 |
| A1690 |  | Supply and Install Tire Shredder | 10.4d | 2024-02-18 | 2024-03-04 | A1680 | 33.15d | 0d |  | 20,000 |
| A-11020 |  | Soft Finishes | 20d | 2024-02-22 | 2024-03-23 | A-11010 | 70.86d |  | PLASTER [280.52 h] | 265,521.5 |
| A1700 |  | Construction of Fence | 14.06d | 2024-03-04 | 2024-03-24 | A1690, A4040 | 33.15d | 0d | Concrete Foundation Subcontractor [140.62 h] | 202,500 |
| A1710 |  | Supply and install metal gates | 10.72d | 2024-03-24 | 2024-04-09 | A1700 | 33.15d | 0d | Concrete Foundation Subcontractor [107.22 h] | 36,000 |
| A1720 |  | Execute Road Works | 12.09d | 2024-04-09 | 2024-04-27 | A1710 | 33.15d | 0d | Paving & Roadways Subcontractor [120.87 h] | 104,000 |
| A1730 |  | Construct Median | 14.01d | 2024-04-27 | 2024-05-16 | A1720 | 33.15d | 0d | Concrete Foundation Subcontractor [140.12 h] | 200,000 |
| A1750 |  | Execute Road Marking | 5d | 2024-05-16 | 2024-05-25 | A1740, A1730 | 33.15d |  |  | 60,000 |

Notes:
- A1480: Expenses: (New Expense Item) 220
- A1500: Expenses: (New Expense Item) 20000
- A1530: Expenses: (New Expense Item) 209000
- A1520: Expenses: (New Expense Item) 66000
- A1540: Expenses: (New Expense Item) 198000
- A1510: Expenses: (New Expense Item) 15000
- A1560: Expenses: (New Expense Item) 40000
- A1490: Expenses: (New Expense Item) 80000
- A1550: Expenses: (New Expense Item) 25000
- A1460: Expenses: (New Expense Item) 15000
- A1450: Expenses: (New Expense Item) 30000
- A1470: Expenses: (New Expense Item) 180000
- A1590: Expenses: (New Expense Item) 420000
- A3720: Expenses: (New Expense Item) 600000
- A1740: Expenses: (New Expense Item) 160000
- A1600: Expenses: (New Expense Item) 600000
- A1610: Expenses: (New Expense Item) 120000
- A1620: Expenses: (New Expense Item) 30000
- A1630: Expenses: (New Expense Item) 7500
- A1640: Expenses: (New Expense Item) 7200
- A1650: Expenses: (New Expense Item) 32000
- A-11000: Expenses: (New Expense Item) 300000
- A1660: Expenses: (New Expense Item) 12000
- A1670: Expenses: (New Expense Item) 80000
- A-11010: Expenses: (New Expense Item) 300000
- A1680: Expenses: (New Expense Item) 12000
- A1690: Expenses: (New Expense Item) 20000
- A-11020: Expenses: (New Expense Item) 265522
- A1700: Expenses: (New Expense Item) 202500
- A1710: Expenses: (New Expense Item) 36000
- A1720: Expenses: (New Expense Item) 104000
- A1730: Expenses: (New Expense Item) 200000
- A1750: Expenses: (New Expense Item) 60000

| ID | WBS | Activity | Duration | Start | Finish | Predecessors | Total float | Free float | Resources | Cost |
| --- | --- | --- | --- | --- | --- | --- | --- | --- | --- | --- |
|  | 2 | **Electrical works** |  | 2023-08-24 | 2024-04-03 |  |  |  |  |  |
| A1760 |  | street lighting poles for parking | 12d | 2023-08-24 | 2023-09-11 | A4010 | 136.06d | 0d | ELECTRICAL.HELPER [123.47 h] | 117,000 |
| A1800 |  | install cables from LCP to lighting poles | 13.53d | 2023-08-24 | 2023-09-13 | A4010 | 63.09d | 0d | ELECTRICAL.HELPER [135.3 h] | 176,000 |
| A1770 |  | street lighting for Bus Outbound | 10d | 2023-09-11 | 2023-09-25 | A1760 | 136.06d | 0d | ELECTRICAL.HELPER [100 h] | 72,000 |
| A1830 |  | install cables from Lighting panel boards | 14.19d | 2023-09-13 | 2023-10-03 | A1800 | 63.09d | 0d | ELECTRICAL.HELPER [141.92 h] | 209,000 |
| A1780 |  | install of lighting control pillar for Bus Outbound | 5d | 2023-09-25 | 2023-10-02 | A1770 | 136.06d | 0d | ELECTRICAL.HELPER [50 h] | 15,000 |
| A1930 |  | install power panel board for Immigration Hall | 20d | 2023-10-03 | 2023-10-31 | A1780 | 136.06d | 0d | ELECTRICAL.HELPER [50 h] | 12,000 |
| A1790 |  | install cables from MDB to LCP | 14.01d | 2023-10-03 | 2023-10-24 | A1830 | 63.09d | 0d | ELECTRICAL.HELPER [140.12 h] | 200,000 |
| A1820 |  | install cables from MDB to SMDB | 13.01d | 2023-10-24 | 2023-11-12 | A1790 | 63.09d | 0d | ELECTRICAL.HELPER [130.08 h] | 150,000 |
| A1940 |  | install sub-main distribution board for Masjed | 20d | 2023-11-01 | 2023-11-29 | A1930 | 136.06d | 0d | ELECTRICAL.HELPER [50 h] | 30,000 |
| A1840 |  | install cables from Power panel boards | 14.19d | 2023-11-12 | 2023-12-03 | A1820 | 63.09d | 0d | ELECTRICAL.HELPER [141.92 h] | 209,000 |
| A1810 |  | install uninteruptible power supply | 20d | 2023-11-20 | 2023-12-19 | A1940 FS-7d | 136.06d |  | ELECTRICAL.HELPER [50 h] | 32,000 |
| A2000 |  | Install Cables from SMDB to Coffee DB | 10.44d | 2023-12-03 | 2023-12-18 | A1840 | 63.09d | 0d | ELECTRICAL.HELPER [104.42 h] | 22,000 |
| A1980 |  | Install Cables from SMDB to Immigration Hall DB | 10.79d | 2023-12-18 | 2024-01-02 | A2000 | 63.09d | 0d | ELECTRICAL.HELPER [107.95 h] | 39,600 |
| A1990 |  | Install Cables from SMDB to Masjed DB | 10.79d | 2024-01-02 | 2024-01-18 | A1980 | 63.09d | 0d | ELECTRICAL.HELPER [107.95 h] | 39,600 |
| A1880 |  | install exit lights for buildings and cabins | 5d | 2024-01-18 | 2024-01-25 | A1990 | 63.09d | 0d | ELECTRICAL.HELPER [50 h] | 8,000 |
| A1900 |  | install GFCI power sockets for buildings and cabins | 5d | 2024-01-25 | 2024-02-01 | A1880 | 63.09d | 0d | ELECTRICAL.HELPER [50 h] | 7,500 |
| A1860 |  | install Interior lighting fixtures for buildings | 5d | 2024-02-01 | 2024-02-10 | A1900 | 63.09d | 0d | ELECTRICAL.HELPER [50 h] | 51,750 |
| A1870 |  | lighting fixtures with battery pack for buildings | 15d | 2024-02-10 | 2024-03-02 | A1860 | 85.09d |  | ELECTRICAL.HELPER [50 h] | 14,000 |
| A1920 |  | install lighting panel board for Immigration Hall | 5d | 2024-02-10 | 2024-02-17 | A1860 | 63.09d | 0d | ELECTRICAL.HELPER [50 h] | 12,000 |
| A1950 |  | install lighting panel board for Masjed | 5d | 2024-02-17 | 2024-02-24 | A1920 | 63.09d | 0d | ELECTRICAL.HELPER [50 h] | 12,000 |
| A1960 |  | install power panel board for Masjed | 5d | 2024-02-24 | 2024-03-02 | A1930, A1950 | 63.09d | 0d | ELECTRICAL.HELPER [110 h] | 12,000 |
| A1890 |  | install power sockets for buildings and cabins | 5d | 2024-03-02 | 2024-03-10 | A1960 | 63.09d | 0d | ELECTRICAL.HELPER [50 h] | 19,250 |
| A1850 |  | install street lighting poles | 7d | 2024-03-10 | 2024-03-19 | A1890 | 63.09d | 0d | ELECTRICAL.HELPER [70 h] | 135,000 |
| A1910 |  | install sub-main distribution board | 5d | 2024-03-19 | 2024-03-27 | A1850 | 63.09d | 0d | ELECTRICAL.HELPER [50 h] | 30,000 |
| A1970 |  | install sub-main distribution board for Coffee | 5d | 2024-03-27 | 2024-04-03 | A1910 | 63.09d |  | ELECTRICAL.HELPER [50 h] | 12,000 |

Notes:
- A1760: Expenses: (New Expense Item) 117000
- A1800: Expenses: (New Expense Item) 176000
- A1770: Expenses: (New Expense Item) 72000
- A1830: Expenses: (New Expense Item) 209000
- A1780: Expenses: (New Expense Item) 15000
- A1930: Expenses: (New Expense Item) 12000
- A1790: Expenses: (New Expense Item) 200000
- A1820: Expenses: (New Expense Item) 150000
- A1940: Expenses: (New Expense Item) 30000
- A1840: Expenses: (New Expense Item) 209000
- A1810: Expenses: (New Expense Item) 32000
- A2000: Expenses: (New Expense Item) 22000
- A1980: Expenses: (New Expense Item) 39600
- A1990: Expenses: (New Expense Item) 39600
- A1880: Expenses: (New Expense Item) 8000
- A1900: Expenses: (New Expense Item) 7500
- A1860: Expenses: (New Expense Item) 51750
- A1870: Expenses: (New Expense Item) 14000
- A1920: Expenses: (New Expense Item) 12000
- A1950: Expenses: (New Expense Item) 12000
- A1960: Expenses: (New Expense Item) 12000
- A1890: Expenses: (New Expense Item) 19250
- A1850: Expenses: (New Expense Item) 135000
- A1910: Expenses: (New Expense Item) 30000
- A1970: Expenses: (New Expense Item) 12000

| ID | WBS | Activity | Duration | Start | Finish | Predecessors | Total float | Free float | Resources | Cost |
| --- | --- | --- | --- | --- | --- | --- | --- | --- | --- | --- |
|  | 4 | **Immigration building** |  | 2023-08-24 | 2023-12-27 |  |  |  |  |  |
|  | 1 | **Mechanical works** |  | 2023-08-24 | 2023-12-27 |  |  |  |  |  |
| A2010 |  | Water supply network pipe | 20d | 2023-08-24 | 2023-09-23 | A4070 | 189.06d | 0d | PLUMBER [104.02 h]; PLUMBER. HELPER [104.02 h] | 20,000 |
| A2110 |  | Firefighting pipes | 10.16d | 2023-08-24 | 2023-09-07 | A4070 | 129.89d | 0d | Fire Suppression Subcontractor [101.62 h]; FIRE FIGHTING.TECH.HELPER [101.62 h]; FIREFIGHTING.TECH [101.62 h] | 8,100 |
| A2090 |  | Manual fire extinguisher DRY Chemical Powder | 10.07d | 2023-09-07 | 2023-09-23 | A2110 | 129.89d | 0d | Fire Suppression Subcontractor [100.65 h] | 3,200 |
| A2020 |  | An electric water heater | 7d | 2023-09-23 | 2023-10-02 | A2010 | 189.06d |  |  | 3,200 |
| A2040 |  | Rain water pipes | 10.16d | 2023-09-23 | 2023-10-08 | A2090 | 129.89d | 0d |  | 8,000 |
| A2030 |  | Sewage pipe for Customs building | 10.5d | 2023-10-08 | 2023-10-23 | A2040 | 129.89d | 0d | PLUMBER [105.02 h] | 25,000 |
| A2050 |  | AC Direct expansion split unit 36000 | 20d | 2023-10-23 | 2023-11-21 | A2030 | 129.89d | 0d | HVAC.TECH [115.35 h] | 76,500 |
| A2060 |  | AC Direct expansion split unit 18000 | 5d | 2023-11-21 | 2023-11-28 | A2050 | 129.89d | 0d | Mech Tech | 12,000 |
| A2070 |  | Ceiling mounted Kitchen Exhaust fan | 5d | 2023-11-28 | 2023-12-05 | A2060 | 129.89d | 0d | Mech Tech | 3,000 |
| A2080 |  | Ceiling mounted toilet Exhaust fan | 5d | 2023-12-05 | 2023-12-13 | A2070 | 129.89d | 0d | Mech Tech | 6,000 |
| A2100 |  | Fire hose cabinets | 10.28d | 2023-12-13 | 2023-12-27 | A2110, A2080 | 129.89d |  | Fire Suppression Subcontractor [102.8 h] | 14,000 |
|  | 5 | **Mosque Building** |  | 2023-07-19 | 2024-03-10 |  |  |  |  |  |
|  | 1 | **Mechanical works** |  | 2023-10-15 | 2024-03-10 |  |  |  |  |  |
| A2120 |  | Water supply pipes for Masjid | 10.4d | 2023-10-15 | 2023-10-30 | A1600 | 155.46d | 0d | PLUMBER [104.02 h]; PLUMBER. HELPER [104.02 h] | 20,000 |
| A2160 |  | AC Direct expansion split unit | 15d | 2023-12-18 | 2024-01-09 | A2000 | 79.92d | 0d | Mech Tech | 52,500 |
| A2130 |  | An electric water heater | 10.07d | 2024-01-09 | 2024-01-23 | A2160 | 79.92d | 0d |  | 3,200 |
| A2180 |  | Manual fire extinguisher DRY powder | 10.03d | 2024-01-23 | 2024-02-07 | A2130 | 79.92d | 0d | HVAC.TECH.HELPER [100.32 h] | 1,600 |
| A2150 |  | Rain water drainage pipes | 10.16d | 2024-02-07 | 2024-02-22 | A2180 | 79.92d | 0d |  | 8,000 |
| A2140 |  | Sewage pipes | 10.5d | 2024-02-22 | 2024-03-09 | A2150 | 79.92d | 0d |  | 25,000 |
| A2170 |  | Wall mounted Exhaust Fan | 1d | 2024-03-09 | 2024-03-10 | A2140 | 79.92d |  | Mech Tech | 9,600 |
|  | 2 | **ELV works** |  | 2023-07-19 | 2024-01-10 |  |  |  |  |  |
| A2260 |  | 10 watts PA Horn Speaker Indoor type | 10.05d | 2023-07-19 | 2023-08-02 | A3590 | 144.47d | 0d | ELECTRICAL.HELPER [100.53 h] | 2,700 |
| A2270 |  | 15 watts PA Horn Speaker Outdoor type | 10.08d | 2023-08-02 | 2023-08-17 | A2260 | 144.47d | 0d | ELECTRICAL.HELPER [100.8 h] | 4,000 |
| A2280 |  | Audio Amplifier 100W with IP connectivity | 10.4d | 2023-08-17 | 2023-09-02 | A2270 | 144.47d | 0d | ELECTRICAL.HELPER [104.02 h] | 20,000 |
| A2290 |  | IP Base PA system Equipment rack | 10.4d | 2023-09-02 | 2023-09-17 | A2280 | 144.47d | 0d | ELECTRICAL.HELPER [104.02 h] | 20,000 |
| A2300 |  | Single Data outlet RJ46 for CCTV cameras | 10.03d | 2023-09-17 | 2023-10-01 | A2290 | 144.47d | 0d | ELECTRICAL.HELPER [100.28 h] | 1,400 |
| A2310 |  | Single Data outlet RJ46 for IP Telephone | 10.03d | 2023-10-01 | 2023-10-16 | A2300 | 144.47d | 0d | ELECTRICAL.HELPER [100.28 h] | 1,400 |
| A2190 |  | PVC duct bank for Masjid | 20d | 2023-10-15 | 2023-11-13 | A1600 | 120.74d | 0d | ELECTRICAL.HELPER [103.02 h] | 15,000 |
| A2320 |  | 12U Equipment and communication cabinet | 10.3d | 2023-10-16 | 2023-10-31 | A2310 | 144.47d | 0d | ELECTRICAL.HELPER [103.02 h] | 15,000 |
| A2210 |  | Manual pull station for Masjid | 15d | 2023-10-30 | 2023-11-21 | A2120 | 155.46d |  | ELECTRICAL.HELPER [100.8 h] | 4,000 |
| A2230 |  | ELV System- Fire Alarm Detection | 15d | 2023-10-31 | 2023-11-22 | A2320 | 144.47d | 0d | ELECTRICAL.HELPER [105.02 h] | 25,000 |
| A2200 |  | Smoke Detectors for Masjid | 20d | 2023-11-13 | 2023-12-12 | A2190 | 120.74d | 0d | ELECTRICAL.HELPER [100.87 h] | 4,320 |
| A2220 |  | Horn with Strobes | 10.09d | 2023-11-22 | 2023-12-06 | A2230 | 144.47d |  | ELECTRICAL.HELPER [100.9 h] | 4,500 |
| A2240 |  | Dual Head Emergency lights | 10.08d | 2023-12-12 | 2023-12-26 | A2200 | 120.74d | 0d | ELECTRICAL.HELPER [100.8 h] | 4,000 |
| A2250 |  | Power Socket Outlet for emergency light | 10.04d | 2023-12-26 | 2024-01-10 | A2240 | 120.74d |  | ELECTRICAL.HELPER [100.35 h] | 1,750 |

Notes:
- A2010: Expenses: (New Expense Item) 20000
- A2110: Expenses: (New Expense Item) 8100
- A2090: Expenses: (New Expense Item) 3200
- A2020: Expenses: (New Expense Item) 3200
- A2040: Expenses: (New Expense Item) 8000
- A2030: Expenses: (New Expense Item) 25000
- A2050: Expenses: (New Expense Item) 76500
- A2060: Expenses: (New Expense Item) 12000
- A2070: Expenses: (New Expense Item) 3000
- A2080: Expenses: (New Expense Item) 6000
- A2100: Expenses: (New Expense Item) 14000
- A2120: Expenses: (New Expense Item) 20000
- A2160: Expenses: (New Expense Item) 52500
- A2130: Expenses: (New Expense Item) 3200
- A2180: Expenses: (New Expense Item) 1600
- A2150: Expenses: (New Expense Item) 8000
- A2140: Expenses: (New Expense Item) 25000
- A2170: Expenses: (New Expense Item) 9600
- A2260: Expenses: (New Expense Item) 2700
- A2270: Expenses: (New Expense Item) 4000
- A2280: Expenses: (New Expense Item) 20000
- A2290: Expenses: (New Expense Item) 20000
- A2300: Expenses: (New Expense Item) 1400
- A2310: Expenses: (New Expense Item) 1400
- A2190: Expenses: (New Expense Item) 15000
- A2320: Expenses: (New Expense Item) 15000
- A2210: Expenses: (New Expense Item) 4000
- A2230: Expenses: (New Expense Item) 25000
- A2200: Expenses: (New Expense Item) 4320
- A2220: Expenses: (New Expense Item) 4500
- A2240: Expenses: (New Expense Item) 4000
- A2250: Expenses: (New Expense Item) 1750

| ID | WBS | Activity | Duration | Start | Finish | Predecessors | Total float | Free float | Resources | Cost |
| --- | --- | --- | --- | --- | --- | --- | --- | --- | --- | --- |
|  | 2 | **Inbound Area Works** |  | 2023-07-18 | 2024-07-04 |  |  |  |  |  |
|  | 1 | **Cargo inbound area** |  | 2023-08-24 | 2024-04-07 |  |  |  |  |  |
|  | 1 | **Civil works** |  | 2023-08-29 | 2024-04-07 |  |  |  |  |  |
| A2330 |  | Provide New Prefabricated Security | 14.81d | 2023-08-29 | 2023-09-19 | A3700 | 122.97d | 0d | CABINET.HELPER [148.13 h] | 240,000 |
| A2340 |  | Cabinets/Telecom Rooms | 12.41d | 2023-08-29 | 2023-09-16 | A3700 | 60.32d | 0d | CABINET.TECH [124.07 h]; CABINET.HELPER [124.07 h] | 120,000 |
| A2440 |  | Construct Median with Interlocking | 15.02d | 2023-09-16 | 2023-10-08 | A2340 | 60.32d | 0d | Curbstone builder [150.15 h] | 250,000 |
| A2410 |  | Supply and Install Tire Shredder | 20d | 2023-09-19 | 2023-10-18 | A2330 | 143.25d | 13.11d | WELDER.HELPER [104.02 h] | 20,000 |
| A2350 |  | Construct New Concrete Islands | 10.18d | 2023-10-08 | 2023-10-23 | A2440 | 60.32d | 0d | Concrete Foundation Subcontractor [101.8 h] | 9,000 |
| A2360 |  | install curbs for cabins | 10.32d | 2023-10-23 | 2023-11-06 | A2350 | 130.13d | 0d | Curbstone builder [103.22 h] | 16,000 |
| A2420 |  | Construction of Fence | 13.61d | 2023-10-23 | 2023-11-12 | A2350 | 60.32d | 0d | Specialty Metal Fabricator Subcontractor [136.1 h] | 180,000 |
| A2380 |  | Supply and Install Traffic Lights | 15d | 2023-11-06 | 2023-11-28 | A2410, A2360 | 130.13d | 69.81d | Crane [104.82 h]; WELDER.HELPER [104.82 h] | 24,000 |
| A2400 |  | Construction of Speed humps | 10.24d | 2023-11-12 | 2023-11-26 | A2420 | 60.32d | 0d | ASPHALT PAVER [102.4 h]; Paving & Roadways Subcontractor [102.4 h] | 12,000 |
| A2450 |  | Curb Stone | 20d | 2023-11-26 | 2023-12-25 | A2400 | 60.32d | 0d | Curbstone builder [140.12 h] | 200,000 |
| A2370 |  | Execute Cabin Protection Works | 11.28d | 2023-12-25 | 2024-01-10 | A2450, A2330 | 60.32d | 0d | Concrete Foundation Subcontractor [112.83 h]; WELDER [112.83 h] | 64,000 |
| A2460 |  | Execute Road Marking | 15d | 2024-01-10 | 2024-02-01 | A2370 | 60.32d | 0d | PAINTER [118.05 h] | 90,000 |
| A2430 |  | Execute Road Works | 20d | 2024-02-08 | 2024-03-09 | A2460 FS+5d | 60.32d | 0d | Paving & Roadways Subcontractor [388.82 h] | 1,440,000 |
| A2390 |  | First and Second Fix for Gate | 20d | 2024-03-09 | 2024-04-07 | A2430, A2380 | 60.32d |  | Concrete Foundation Subcontractor [152.15 h]; Mech Tech [152.15 h]; ELECTRICAL.HELPER [152.15 h] | 260,000 |
|  | 2 | **Electrical works** |  | 2023-08-24 | 2024-04-03 |  |  |  |  |  |
| A2470 |  | install street lighting poles parking area | 20d | 2023-08-24 | 2023-09-23 | A4010 | 120.84d | 0d | ELECTRICIAN [200 h]; ELECTRICAL.HELPER [200 h] | 270,000 |
| A2550 |  | GFCI power sockets for Immigraton Building | 4d | 2023-09-16 | 2023-09-21 | A2340 | 63.44d | 0d | ELECTRICIAN [40 h]; ELECTRICAL.HELPER [40 h] | 7,500 |
| A2620 |  | install Automatic Transfer Switch | 10.7d | 2023-09-21 | 2023-10-07 | A2550 | 63.44d | 0d | ELECTRICIAN [107.02 h]; ELECTRICAL.HELPER [107.02 h] | 35,000 |
| A2650 |  | install uninterruptible power supply | 15d | 2023-09-23 | 2023-10-14 | A2470 | 120.84d | 0d | ELECTRICIAN [150 h]; ELECTRICAL.HELPER [150 h] | 48,000 |
| A2590 |  | install cables from MDB to distribution board | 10.9d | 2023-10-07 | 2023-10-23 | A2620 | 63.44d | 0d | ELECTRICIAN [109.03 h]; ELECTRICAL.HELPER [109.03 h] | 45,000 |
| A2610 |  | Installation of Generator | 13.01d | 2023-10-15 | 2023-11-02 | A2650 | 120.84d | 0d | ELECTRICIAN [130.08 h]; ELECTRICAL.HELPER [130.08 h] | 150,000 |
| A2560 |  | install Distribution board | 10.4d | 2023-10-23 | 2023-11-07 | A2590 | 63.44d | 0d | ELECTRICIAN [104.02 h]; ELECTRICAL.HELPER [104.02 h] | 20,000 |
| A2580 |  | lighting panel board for Immigraton Building | 10.4d | 2023-11-02 | 2023-11-18 | A2610 | 120.84d | 0d | ELECTRICIAN [104.02 h]; ELECTRICAL.HELPER [104.02 h] | 20,000 |
| A2630 |  | install EDB pillar | 10.4d | 2023-11-07 | 2023-11-22 | A2560 | 63.44d | 0d | ELECTRICIAN [104.02 h]; ELECTRICAL.HELPER [104.02 h] | 20,000 |
| A2600 |  | Lightning Protection and Grounding System | 10.7d | 2023-11-18 | 2023-12-03 | A2580 | 120.84d | 0d | ELECTRICIAN [107.02 h]; ELECTRICAL.HELPER [107.02 h] | 35,000 |
| A2490 |  | install Electrical cables from DB to LCP | 10.75d | 2023-11-22 | 2023-12-07 | A2630 | 63.44d | 0d | ELECTRICIAN [107.52 h]; ELECTRICAL.HELPER [107.52 h] | 37,500 |
| A2570 |  | Power Panel board for Immigraton Building | 10.4d | 2023-12-03 | 2023-12-18 | A2600 | 120.84d | 57.4d | ELECTRICIAN [104.02 h]; ELECTRICAL.HELPER [104.02 h] | 20,000 |
| A2500 |  | install Electrical cables from LCP to lighting poles | 14.21d | 2023-12-07 | 2023-12-28 | A2490 | 63.44d | 0d | ELECTRICIAN [142.12 h]; ELECTRICAL.HELPER [142.12 h] | 210,000 |
| A2640 |  | Install electrical LV Cables from EDB to DB | 18.02d | 2023-12-28 | 2024-01-24 | A2500 | 63.44d | 0d | ELECTRICIAN [180.23 h]; ELECTRICAL.HELPER [180.23 h] | 400,000 |
| A2530 |  | install exit lights for Immigraton Building | 10.18d | 2024-01-24 | 2024-02-07 | A2640 | 63.44d | 0d | ELECTRICIAN [101.8 h]; ELECTRICAL.HELPER [101.8 h] | 9,000 |
| A2510 |  | install Interior lighting fixtures for Immigraton | 11.5d | 2024-02-07 | 2024-02-25 | A2530 | 63.44d | 0d | ELECTRICIAN [115.05 h]; ELECTRICAL.HELPER [115.05 h] | 75,000 |
| A2520 |  | install Interior lighting with battery | 10.43d | 2024-02-25 | 2024-03-11 | A2510 | 63.44d | 0d | ELECTRICIAN [104.27 h]; ELECTRICAL.HELPER [104.27 h] | 21,250 |
| A2540 |  | power sockets for Immigraton Building | 10.7d | 2024-03-11 | 2024-03-26 | A2570, A2520 | 63.44d | 0d | ELECTRICIAN [107.02 h]; ELECTRICAL.HELPER [107.02 h] | 35,000 |
| A2480 |  | Supply and install of lighting control pillar | 5d | 2024-03-26 | 2024-04-03 | A2540 | 63.44d |  | ELECTRICIAN [150 h]; ELECTRICAL.HELPER [150 h] | 15,000 |

Notes:
- A2330: Expenses: (New Expense Item) 240000
- A2340: Expenses: (New Expense Item) 120000
- A2440: Expenses: (New Expense Item) 250000
- A2410: Expenses: (New Expense Item) 20000
- A2350: Expenses: (New Expense Item) 9000
- A2360: Expenses: (New Expense Item) 16000
- A2420: Expenses: (New Expense Item) 180000
- A2380: Expenses: (New Expense Item) 24000
- A2400: Expenses: (New Expense Item) 12000
- A2450: Expenses: (New Expense Item) 200000
- A2370: Expenses: (New Expense Item) 64000
- A2460: Expenses: (New Expense Item) 90000
- A2430: Expenses: (New Expense Item) 1440000
- A2390: Expenses: (New Expense Item) 260000
- A2470: Expenses: (New Expense Item) 270000
- A2550: Expenses: (New Expense Item) 7500
- A2620: Expenses: (New Expense Item) 35000
- A2650: Expenses: (New Expense Item) 48000
- A2590: Expenses: (New Expense Item) 45000
- A2610: Expenses: (New Expense Item) 150000
- A2560: Expenses: (New Expense Item) 20000
- A2580: Expenses: (New Expense Item) 20000
- A2630: Expenses: (New Expense Item) 20000
- A2600: Expenses: (New Expense Item) 35000
- A2490: Expenses: (New Expense Item) 37500
- A2570: Expenses: (New Expense Item) 20000
- A2500: Expenses: (New Expense Item) 210000
- A2640: Expenses: (New Expense Item) 400000
- A2530: Expenses: (New Expense Item) 9000
- A2510: Expenses: (New Expense Item) 75000
- A2520: Expenses: (New Expense Item) 21250
- A2540: Expenses: (New Expense Item) 35000
- A2480: Expenses: (New Expense Item) 15000

| ID | WBS | Activity | Duration | Start | Finish | Predecessors | Total float | Free float | Resources | Cost |
| --- | --- | --- | --- | --- | --- | --- | --- | --- | --- | --- |
|  | 3 | **Mechanical works** |  | 2023-08-24 | 2024-01-07 |  |  |  |  |  |
| A2660 |  | Water supply pipe | 10.4d | 2023-08-24 | 2023-09-09 | A4070 | 160.38d | 0d | PLUMBER [104.02 h]; PLUMBER. HELPER [104.02 h] | 20,000 |
| A2680 |  | Sewage pipe | 10.5d | 2023-09-09 | 2023-09-24 | A2660 | 180.16d | 57.19d | PLUMBER [105.02 h]; PLUMBER. HELPER [105.02 h] | 25,000 |
| A2710 |  | AC Direct expansion split unit 18000 | 15d | 2023-09-19 | 2023-10-11 | A2330 | 122.97d | 0d | Mech Tech; HVAC.TECH.HELPER | 12,000 |
| A2700 |  | AC Direct expansion split unit 36000 | 15d | 2023-10-11 | 2023-11-02 | A2710 | 122.97d | 0d | Mech Tech; HVAC.TECH.HELPER | 76,500 |
| A2670 |  | An electric water heater | 10d | 2023-11-02 | 2023-11-16 | A2700, A2660 | 122.97d | 0d | PLUMBER. HELPER [100 h] | 3,200 |
| A2720 |  | Ceiling mounted Kitchen Exhaust fan | 5d | 2023-11-16 | 2023-11-23 | A2670 | 122.97d | 0d | Mech Tech; HVAC.TECH.HELPER | 3,000 |
| A2730 |  | Ceiling mounted toilet Exhaust fan | 5d | 2023-11-23 | 2023-12-02 | A2720 | 122.97d | 0d | Mech Tech; HVAC.TECH.HELPER | 6,000 |
| A2750 |  | Fire hose cabinets | 10.28d | 2023-12-02 | 2023-12-16 | A2730 | 122.97d | 0d | Fire Suppression Subcontractor [102.8 h] | 14,000 |
| A2760 |  | Firefighting pipes network | 5d | 2023-12-16 | 2023-12-24 | A2680, A2750 | 122.97d | 0d | PLUMBER [50 h]; PLUMBER. HELPER [50 h] | 8,100 |
| A2740 |  | Manual fire extinguisher DRY powder | 5d | 2023-12-24 | 2023-12-31 | A2760 | 122.97d | 0d | Fire Suppression Subcontractor [50 h] | 3,600 |
| A2690 |  | Rain water Drainage pipes | 5d | 2023-12-31 | 2024-01-07 | A2740 | 122.97d |  | PLUMBER [50 h]; PLUMBER. HELPER [50 h] | 8,000 |
|  | 4 | **ELV works** |  | 2023-08-24 | 2024-04-02 |  |  |  |  |  |
| A2770 |  | First Fix for Security [SFT] | 11d | 2023-08-24 | 2023-09-09 | A4010 | 63.81d | 0d | ELECTRICAL.HELPER [110 h] | 19,500 |
| A2780 |  | 3x50mm dia PVC duct bank | 11d | 2023-09-10 | 2023-09-25 | A2770 | 63.81d | 0d | ELECTRICAL.HELPER [104.02 h] | 20,000 |
| A2790 |  | Smoke Detectors | 10.16d | 2023-09-25 | 2023-10-10 | A2780 | 63.81d | 0d | ELECTRICAL.HELPER [101.57 h] | 7,800 |
| A2800 |  | Manual pull station | 3d | 2023-10-10 | 2023-10-15 | A2790 | 63.81d | 0d | ELECTRICAL.HELPER [30 h] | 8,000 |
| A2810 |  | Horn with Strobes | 10.14d | 2023-10-15 | 2023-10-29 | A2800 | 63.81d | 0d | ELECTRICAL.HELPER [101.45 h] | 7,200 |
| A2820 |  | Fire Alarm Control Panel with IP connectivity | 10d | 2023-10-29 | 2023-11-13 | A2810 | 63.81d | 0d | ELECTRICAL.HELPER [105.02 h] | 25,000 |
| A2830 |  | Dual Head Emergency lights with battery | 5d | 2023-11-13 | 2023-11-20 | A2820 | 63.81d | 0d | ELECTRICAL.HELPER [101.6 h] | 8,000 |
| A2840 |  | Power Socket Outlet for emergency light | 10d | 2023-11-20 | 2023-12-05 | A2830 | 63.81d | 0d | ELECTRICAL.HELPER [100.7 h] | 3,500 |
| A2850 |  | 10 watts PA Horn Speaker Indoor type | 10.22d | 2023-12-05 | 2023-12-19 | A2840 | 63.81d | 0d | ELECTRICAL.HELPER [102.17 h] | 10,800 |
| A2860 |  | 15 watts PA Horn Speaker Outdoor type | 10.16d | 2023-12-19 | 2024-01-03 | A2850 | 63.81d | 0d | ELECTRICAL.HELPER [101.6 h] | 8,000 |
| A2870 |  | Audio Amplifier 100W with IP connectivity | 10.8d | 2024-01-03 | 2024-01-20 | A2860 | 63.81d | 0d | ELECTRICAL.HELPER [108.02 h] | 40,000 |
| A2880 |  | IP Base PA system Equipment rack | 10.4d | 2024-01-20 | 2024-02-04 | A2870 | 63.81d | 0d | ELECTRICAL.HELPER [104.02 h] | 20,000 |
| A2890 |  | Duplex Data outlet RJ45 for work stations | 10.28d | 2024-02-04 | 2024-02-18 | A2880 | 63.81d | 0d | ELECTRICAL.HELPER [102.8 h] | 14,000 |
| A2900 |  | Single Data outlet RJ46 for WIFI | 10.08d | 2024-02-18 | 2024-03-04 | A2890 | 63.81d | 0d | ELECTRICAL.HELPER [100.85 h] | 4,200 |
| A2910 |  | Single Data outlet RJ46 for IP Telephone | 5d | 2024-03-04 | 2024-03-11 | A2900 | 63.81d | 0d | ELECTRICAL.HELPER [101.4 h] | 7,000 |
| A2920 |  | Data outlet RJ46 for CCTV cameras/ Security system | 5d | 2024-03-11 | 2024-03-19 | A2910 | 63.81d | 0d | ELECTRICAL.HELPER [102.1 h] | 10,500 |
| A2930 |  | 42U Equipment and communication cabinet | 5d | 2024-03-19 | 2024-03-26 | A2920 | 63.81d | 0d | ELECTRICAL.HELPER [110.03 h] | 50,000 |
| A2940 |  | 12U Equipment and communication cabinet | 5d | 2024-03-26 | 2024-04-02 | A2930 | 63.81d |  | ELECTRICAL.HELPER [106.02 h] | 30,000 |

Notes:
- A2660: Expenses: (New Expense Item) 20000
- A2680: Expenses: (New Expense Item) 25000
- A2710: Expenses: (New Expense Item) 12000
- A2700: Expenses: (New Expense Item) 76500
- A2670: Expenses: (New Expense Item) 3200
- A2720: Expenses: (New Expense Item) 3000
- A2730: Expenses: (New Expense Item) 6000
- A2750: Expenses: (New Expense Item) 14000
- A2760: Expenses: (New Expense Item) 8100
- A2740: Expenses: (New Expense Item) 3600
- A2690: Expenses: (New Expense Item) 8000
- A2770: Expenses: (New Expense Item) 19500
- A2780: Expenses: (New Expense Item) 20000
- A2790: Expenses: (New Expense Item) 7800
- A2800: Expenses: (New Expense Item) 8000
- A2810: Expenses: (New Expense Item) 7200
- A2820: Expenses: (New Expense Item) 25000
- A2830: Expenses: (New Expense Item) 8000
- A2840: Expenses: (New Expense Item) 3500
- A2850: Expenses: (New Expense Item) 10800
- A2860: Expenses: (New Expense Item) 8000
- A2870: Expenses: (New Expense Item) 40000
- A2880: Expenses: (New Expense Item) 20000
- A2890: Expenses: (New Expense Item) 14000
- A2900: Expenses: (New Expense Item) 4200
- A2910: Expenses: (New Expense Item) 7000
- A2920: Expenses: (New Expense Item) 10500
- A2930: Expenses: (New Expense Item) 50000
- A2940: Expenses: (New Expense Item) 30000

| ID | WBS | Activity | Duration | Start | Finish | Predecessors | Total float | Free float | Resources | Cost |
| --- | --- | --- | --- | --- | --- | --- | --- | --- | --- | --- |
|  | 2 | **Passenger intbound area** |  | 2023-08-24 | 2024-04-07 |  |  |  |  |  |
|  | 1 | **Civil works** |  | 2023-08-29 | 2024-04-07 |  |  |  |  |  |
| A2960 |  | Cabinets/Telecom Rooms | 11.2d | 2023-08-29 | 2023-09-14 | A3700 | 60.75d | 0d | CABINET.TECH [112.03 h]; CABINET.HELPER [112.03 h] | 60,000 |
| A3060 |  | Construct Median withInterlocking Tiles | 11.3d | 2023-09-14 | 2023-10-01 | A2960 | 60.75d | 0d | Curbstone builder [113.03 h] | 65,000 |
| A2970 |  | Construct New Concrete Islands | 10.15d | 2023-10-01 | 2023-10-15 | A3060 | 60.75d | 0d | Concrete Foundation Subcontractor [101.5 h] | 7,500 |
| A3020 |  | Construction of Speed humps | 10.24d | 2023-10-15 | 2023-10-30 | A2970 | 60.75d | 0d | ASPHALT PAVER [102.4 h]; Paving & Roadways Subcontractor [102.4 h] | 12,000 |
| A3070 |  | Curb Stone | 11.12d | 2023-10-30 | 2023-11-15 | A3020 | 60.75d | 0d | Curbstone builder [111.23 h] | 56,000 |
| A3050 |  | Execute Asphalt Re-spreading | 10.9d | 2023-11-15 | 2023-12-02 | A3070 | 60.75d | 0d | PAVING WORKS [109.03]; ASPHALT PAVER [109.03 h]; Paving & Roadways Subcontractor [109.03 h] | 45,000 |
| A2990 |  | Execute Cabin Protection Works | 11.28d | 2023-12-02 | 2023-12-18 | A3050 | 60.75d | 0d | Concrete Foundation Subcontractor [112.83 h] | 64,000 |
| A3080 |  | Execute Road Marking | 10.72d | 2023-12-18 | 2024-01-02 | A2990 | 60.75d | 0d |  | 36,000 |
| A3040 |  | Execute Road Works | 10.72d | 2024-01-02 | 2024-01-18 | A3080 | 60.75d | 0d | Paving & Roadways Subcontractor [107.22 h]; ASPHALT PAVER [107.22 h] | 36,000 |
| A3010 |  | First and Second Fix for Gate | 13.21d | 2024-01-18 | 2024-02-06 | A3040 | 60.75d | 0d | Crane [132.08 h]; Mech Tech [132.08 h] | 160,000 |
| A2950 |  | Provide New Prefabricated | 14.81d | 2024-02-06 | 2024-02-28 | A3010 | 60.75d | 0d | CABINET.TECH [148.13 h]; CABINET.HELPER [148.13 h] | 240,000 |
| A2980 |  | Supply and install curbs | 10.24d | 2024-02-28 | 2024-03-13 | A2950 | 60.75d | 0d | Curbstone builder [102.4 h] | 12,000 |
| A3030 |  | Supply and Install Tire Shredder | 10.4d | 2024-03-13 | 2024-03-28 | A2980 | 60.75d | 0d | Specialty Metal Fabricator Subcontractor [104.02 h]; METAL WORKS [104.02] | 20,000 |
| A3000 |  | Supply and Install Traffic Lights | 6d | 2024-03-28 | 2024-04-07 | A3030 | 60.75d |  | PAINTER [104.82 h] | 24,000 |
|  | 2 | **Electrical works** |  | 2023-08-24 | 2023-11-18 |  |  |  |  |  |
| A3120 |  | install cables from LCP to lighting poles | 12.41d | 2023-08-24 | 2023-09-11 | A4010 | 157.25d | 0d | ELECTRICAL.HELPER [124.07 h] | 120,000 |
| A3110 |  | install exterior cables from MDB to LCP | 10.88d | 2023-09-11 | 2023-09-27 | A3120 | 157.25d | 0d | ELECTRICAL.HELPER [108.83 h] | 44,000 |
| A3100 |  | install of lighting control pillar | 10.3d | 2023-09-27 | 2023-10-12 | A3110 | 157.25d | 0d | ELECTRICAL.HELPER [103.02 h] | 15,000 |
| A3090 |  | install street lighting poles | 13.61d | 2023-10-12 | 2023-11-01 | A3100 | 157.25d | 0d | ELECTRICAL.HELPER [136.1 h] | 180,000 |
| A3130 |  | install uninterruptible power supply | 11.61d | 2023-11-01 | 2023-11-18 | A3090 | 157.25d |  | ELECTRICAL.HELPER [116.05 h] | 80,000 |
|  | 3 | **Buss inbound area** |  | 2023-07-18 | 2024-07-04 |  |  |  |  |  |
|  | 1 | **Civil works** |  | 2023-07-18 | 2024-06-11 |  |  |  |  |  |
| A3150 |  | Cabinets/Telecom Rooms | 10.6d | 2023-07-18 | 2023-08-02 | A3590 SS | 0d |  | CABINET.TECH [106.02 h]; CABINET.HELPER [106.02 h] | 30,000 |
| A3250 |  | Construct Median with Interlocking Tiles | 13.35d | 2023-08-02 | 2023-08-21 | A3150 | 0d |  | Curbstone builder [133.5 h] | 167,000 |
| A3160 |  | Construct New Concrete Islands | 13.09d | 2023-08-21 | 2023-09-10 | A3250 | 0d |  | Concrete Foundation Subcontractor [130.88 h]; CONCRETE SUP WORKS [130.88] | 154,000 |
| A3230 |  | Construction of Fence | 17.13d | 2023-09-10 | 2023-10-04 | A3160 | 0d |  | METAL WORKS [171.3] | 355,500 |
| A3210 |  | Construction of Speed Humps | 10.24d | 2023-10-04 | 2023-10-19 | A3230 | 0d |  | ASPHALT PAVER [102.4 h]; Paving & Roadways Subcontractor [102.4 h] | 12,000 |
| A3260 |  | Curb Stone | 12.17d | 2023-10-19 | 2023-11-06 | A3210 | 0d |  | Curbstone builder [121.67 h] | 108,000 |
| A3300 |  | Demolition Works - Buildings | 12d | 2023-11-06 | 2023-11-23 | A3260 | 0d |  | POCKLAIN [127.58 h]; DUMP TRUCK [127.58 h]; Concrete Foundation Subcontractor [127.58 h] | 137,500 |
| A3320 |  | Demolition Works - Curbs | 11d | 2023-11-23 | 2023-12-10 | A3300 | 0d |  | POCKLAIN [106.32 h]; DUMP TRUCK [106.32 h]; Concrete Foundation Subcontractor [106.32 h] | 31,500 |
| A3310 |  | Demolition Works - Medians | 11.2d | 2023-12-10 | 2023-12-26 | A3320 | 0d |  | POCKLAIN [112.03 h]; DUMP TRUCK [112.03 h]; Concrete Foundation Subcontractor [112.03 h] | 60,000 |
| A3240 |  | Execute Asphalt Re-surfacing | 10.9d | 2023-12-26 | 2024-01-11 | A3310 | 0d |  |  | 45,000 |
| A3180 |  | Execute Cabin Protection Works | 10.48d | 2024-01-11 | 2024-01-27 | A3240 | 0d |  | Concrete Foundation Subcontractor [104.82 h] | 24,000 |
| A3270 |  | Execute Road Marking | 10.72d | 2024-01-27 | 2024-02-11 | A3180 | 0d |  |  | 36,000 |
| A3200 |  | First and Second Fix for Gate | 11.2d | 2024-02-11 | 2024-02-27 | A3270 | 0d |  | Concrete Foundation Subcontractor [112.03 h]; Crane [112.03 h]; ELECTRICAL WORKS [112.03]; ELECTRICAL.HELPER [112.03 h]; Mech Tech [112.03 h] | 60,000 |
| A3140 |  | Provide New Prefabricated | 11.8d | 2024-02-27 | 2024-03-16 | A3200 | 0d |  | CABINET.TECH [118.05 h]; CABINET.HELPER [118.05 h] | 90,000 |
| A3290 |  | Remove and re-install fence | 14.01d | 2024-03-16 | 2024-04-04 | A3140 | 5.09d | 0d |  | 200,000 |
| A3170 |  | Supply and install curbs | 10.11d | 2024-04-04 | 2024-04-20 | A3290 | 5.09d | 0d | Curbstone builder [101.05 h] | 5,200 |
| A3280 |  | Supply and install Shaded Walkway | 15.33d | 2024-04-20 | 2024-05-12 | A3170 | 5.09d | 0d | Specialty Metal Fabricator Subcontractor [153.35 h]; METAL WORKS [153.35] | 266,000 |
| A3220 |  | Supply and Install Tire Shredder | 10.4d | 2024-05-12 | 2024-05-27 | A3280 | 5.09d | 0d | Specialty Metal Fabricator Subcontractor [104.02 h] | 20,000 |
| A3190 |  | Supply and Install Traffic Lights | 10.18d | 2024-05-27 | 2024-06-11 | A3220 | 15.93d |  | Crane [101.8 h]; WELDER.HELPER [101.8 h]; ELECTRICAL WORKS [101.8]; ELECTRICAL.HELPER [101.8 h] | 9,000 |

Notes:
- A2960: Expenses: (New Expense Item) 60000
- A3060: Expenses: (New Expense Item) 65000
- A2970: Expenses: (New Expense Item) 7500
- A3020: Expenses: (New Expense Item) 12000
- A3070: Expenses: (New Expense Item) 56000
- A3050: Expenses: (New Expense Item) 45000
- A2990: Expenses: (New Expense Item) 64000
- A3080: Expenses: (New Expense Item) 36000
- A3040: Expenses: (New Expense Item) 36000
- A3010: Expenses: (New Expense Item) 160000
- A2950: Expenses: (New Expense Item) 240000
- A2980: Expenses: (New Expense Item) 12000
- A3030: Expenses: (New Expense Item) 20000
- A3000: Expenses: (New Expense Item) 24000
- A3120: Expenses: (New Expense Item) 120000
- A3110: Expenses: (New Expense Item) 44000
- A3100: Expenses: (New Expense Item) 15000
- A3090: Expenses: (New Expense Item) 180000
- A3130: Expenses: (New Expense Item) 80000
- A3150: Expenses: (New Expense Item) 30000
- A3250: Expenses: (New Expense Item) 167000
- A3160: Expenses: (New Expense Item) 154000
- A3230: Expenses: (New Expense Item) 355500
- A3210: Expenses: (New Expense Item) 12000
- A3260: Expenses: (New Expense Item) 108000
- A3300: Expenses: (New Expense Item) 137500
- A3320: Expenses: (New Expense Item) 31500
- A3310: Expenses: (New Expense Item) 60000
- A3240: Expenses: (New Expense Item) 45000
- A3180: Expenses: (New Expense Item) 24000
- A3270: Expenses: (New Expense Item) 36000
- A3200: Expenses: (New Expense Item) 60000
- A3140: Expenses: (New Expense Item) 90000
- A3290: Expenses: (New Expense Item) 200000
- A3170: Expenses: (New Expense Item) 5200
- A3280: Expenses: (New Expense Item) 266000
- A3220: Expenses: (New Expense Item) 20000
- A3190: Expenses: (New Expense Item) 9000

| ID | WBS | Activity | Duration | Start | Finish | Predecessors | Total float | Free float | Resources | Cost |
| --- | --- | --- | --- | --- | --- | --- | --- | --- | --- | --- |
|  | 2 | **Electrical works** |  | 2023-11-15 | 2024-03-05 |  |  |  |  |  |
| A3360 |  | install cables from LCP to lighting poles | 20d | 2023-11-15 | 2023-12-14 | A3070 | 83.25d | 0d | ELECTRICIAN [124.07 h]; ELECTRICAL.HELPER [124.07 h] | 120,000 |
| A3350 |  | install cables from MDB to LCP | 15d | 2023-12-14 | 2024-01-06 | A3360 | 83.25d | 0d | ELECTRICIAN [108.83 h]; ELECTRICAL.HELPER [108.83 h] | 44,000 |
| A3340 |  | install of lighting control pillar | 10.3d | 2024-01-06 | 2024-01-21 | A3350 | 83.25d | 0d | ELECTRICIAN [103.02 h]; ELECTRICAL.HELPER [103.02 h] | 15,000 |
| A3330 |  | install street lighting poles for New Parking | 20d | 2024-01-21 | 2024-02-19 | A3340 | 83.25d | 0d | ELECTRICAL.HELPER [136.1 h]; ELECTRICIAN [136.1 h] | 180,000 |
| A3370 |  | install UPS | 10.48d | 2024-02-19 | 2024-03-05 | A3330 | 83.25d |  | ELECTRICIAN [104.82 h]; ELECTRICAL.HELPER [104.82 h] | 24,000 |
|  | 3 | **Wet utilties works** |  | 2024-03-16 | 2024-07-04 |  |  |  |  |  |
| A3420 |  | Wet utilities House Connections (sewage) | 10.36d | 2024-03-16 | 2024-03-31 | A3140 | 0d |  | PLUMBING WORKS [103.62]; PLUMBER. HELPER [103.62 h] | 18,000 |
| A3380 |  | Wet utilities House connections (water) | 10.36d | 2024-03-31 | 2024-04-15 | A3420 | 0d |  | PLUMBING WORKS [103.62]; PLUMBER. HELPER [103.62 h] | 18,000 |
| A3430 |  | Wet utilities Irrigation water Connections | 20d | 2024-04-15 | 2024-05-14 | A3380 | 0d |  | PLUMBING WORKS [250]; PLUMBER. HELPER [250 h] | 100,000 |
| A3390 |  | Wet utilities Overhead Water Tank | 10.24d | 2024-05-14 | 2024-05-29 | A3430 | 0d |  | PLUMBING WORKS [102.4]; PLUMBER. HELPER [102.4 h] | 12,000 |
| A3410 |  | Wet utilities Water Pumps | 20d | 2024-05-29 | 2024-06-27 | A3390 | 0d |  | PLUMBING WORKS [200]; PLUMBER. HELPER [200 h] | 75,000 |
| A3400 |  | Wet utilities Water tank (burried) | 5d | 2024-06-27 | 2024-07-04 | A3410 | 0d |  | PLUMBING WORKS [103.62]; PLUMBER. HELPER [103.62 h] | 18,000 |
|  | 4 | **Mechanical works** |  | 2024-05-27 | 2024-06-26 |  |  |  |  |  |
| A3440 |  | Misting fans for shaded walk way area | 10.42d | 2024-05-27 | 2024-06-11 | A3220 | 5.09d | 0d | ELECTRICAL.HELPER [104.22 h]; Mech Tech [104.22 h] | 21,000 |
| A3450 |  | Misting pumps and its network | 10.6d | 2024-06-11 | 2024-06-26 | A3440 | 5.09d |  | PLASTER.HELPER [106.02 h] | 30,000 |
|  | 4 | **landscaping** |  | 2023-09-03 | 2024-02-19 |  |  |  |  |  |
| A3460 |  | Soil Preperation | 11.57d | 2023-09-03 | 2023-09-19 | A3900 | 93.1d | 0d | LOADER [115.65 h]; Agricultural tec [115.65 h]; Agricultural Helper [115.65 h]; SOIL TERMITE WORKS [115.65]; SOIL REPLACEMENT WORKS [115.65] | 78,000 |
| A3470 |  | Ziziphus spina-Christi , Tree | 10d | 2023-09-19 | 2023-10-03 | A3460 | 93.1d | 0d | Agricultural tec [70 h]; Agricultural Helper [70 h] | 90,000 |
| A3480 |  | Carissa green carpet | 15d | 2023-10-03 | 2023-10-25 | A3470 | 93.1d | 0d | Agricultural tec [70 h]; Agricultural Helper [70 h] | 180,000 |
| A3490 |  | Pennisetum Setaceum shrub | 11.2d | 2023-10-25 | 2023-11-11 | A3480 | 93.1d | 0d | Agricultural tec [112.03 h]; Agricultural Helper [112.03 h] | 60,000 |
| A3500 |  | Beige Gravels | 10.5d | 2023-11-11 | 2023-11-26 | A3490 | 93.1d | 0d | Agricultural tec [105.02 h]; Agricultural Helper [105.02 h] | 25,000 |
| A3510 |  | Waste bin receptacles | 10.6d | 2023-11-26 | 2023-12-12 | A3500 | 93.1d | 0d | Fire Suppression Subcontractor [106.02 h] | 30,000 |
| A3520 |  | Benches | 10.56d | 2023-12-12 | 2023-12-27 | A3510 | 93.1d | 0d | Concrete Foundation Subcontractor [105.62 h]; CONCRETE SST WORKS [105.62] | 28,000 |
| A3530 |  | manual fire extinguisher (Dry powder) | 5d | 2023-12-27 | 2024-01-03 | A3520 | 93.1d | 0d | Fire Suppression Subcontractor [10 h] | 1,800 |
| A3540 |  | manual fire extinguisher FOAM type | 5d | 2024-01-03 | 2024-01-10 | A3530 | 93.1d | 0d | Fire Suppression Subcontractor [20 h] | 3,000 |
| A3550 |  | A manual fire extinguisher dry carried on wheeld type | 10.32d | 2024-01-10 | 2024-01-25 | A3540 | 93.1d | 0d | Fire Suppression Subcontractor [103.22 h] | 16,000 |
| A3570 |  | A manual fire extinguisher Foam carried on wheeld | 12d | 2024-01-25 | 2024-02-12 | A3550 | 93.1d | 0d | Fire Suppression Subcontractor [105.22 h] | 26,000 |
| A3580 |  | Automatic fire extinguisher Co2 type for electrical rooms | 5d | 2024-02-12 | 2024-02-19 | A3570 | 93.1d |  | Fire Suppression Subcontractor [20 h] | 2,200 |

Notes:
- A3360: Expenses: (New Expense Item) 120000
- A3350: Expenses: (New Expense Item) 44000
- A3340: Expenses: (New Expense Item) 15000
- A3330: Expenses: (New Expense Item) 180000
- A3370: Expenses: (New Expense Item) 24000
- A3420: Expenses: (New Expense Item) 18000
- A3380: Expenses: (New Expense Item) 18000
- A3430: Expenses: (New Expense Item) 100000
- A3390: Expenses: (New Expense Item) 12000
- A3410: Expenses: (New Expense Item) 75000
- A3400: Expenses: (New Expense Item) 18000
- A3440: Expenses: (New Expense Item) 21000
- A3450: Expenses: (New Expense Item) 30000
- A3460: Expenses: (New Expense Item) 78000
- A3470: Expenses: (New Expense Item) 90000
- A3480: Expenses: (New Expense Item) 180000
- A3490: Expenses: (New Expense Item) 60000
- A3500: Expenses: (New Expense Item) 25000
- A3510: Expenses: (New Expense Item) 30000
- A3520: Expenses: (New Expense Item) 28000
- A3530: Expenses: (New Expense Item) 1800
- A3540: Expenses: (New Expense Item) 3000
- A3550: Expenses: (New Expense Item) 16000
- A3570: Expenses: (New Expense Item) 26000
- A3580: Expenses: (New Expense Item) 2200

| ID | WBS | Activity | Duration | Start | Finish | Predecessors | Total float |
| --- | --- | --- | --- | --- | --- | --- | --- |
|  | A.5.1 | **Testing & Commissioning** |  | 2024-07-04 | 2024-07-11 |  |  |
| A3660 |  | Testing & Commissioning | 5d | 2024-07-04 | 2024-07-11 | A1470, A2480, A3130, A3190, A3370, A3400, A1370, A1870, A1810, A3000, A2060, A2020, A2200, A2390, A2690, A2210, A2220, A2100, A2240, A2250, A3580, A2940, A1180, A1310, A2170, A3450, A1970, A-11020, A3600-10 | 0d |
|  | 5 | **Close Out** |  | 2024-07-11 | 2024-07-16 |  |  |
|  | 6 | **Hanover** |  | 2024-07-11 | 2024-07-16 |  |  |
| A3670 |  | Handover | 3d | 2024-07-11 | 2024-07-16 | A3660, A1440, A1750 | 0d |
